# Plan_Sangame

Schedule from MS Project, 2015-10-07 to 2016-05-02.

## Calendars

- Standard: Mon-Fri 08:00-12:00, 13:00-17:00; Sat-Sun off.

## Resources

| Resource |
| --- |
| cuongnt |
| dung |
| thiết kế |
| cc |
| ko lam đc |
| biểu mẫu |
| cuongnt (fai có form mẫu) |
| cần phối hợp với android |
| khi có yêu cầu cụ thể của VIP |
| do android |

## Schedule

| ID | WBS | Task | Duration | Start | Finish | Predecessors | Total slack | Resources | Work |
| --- | --- | --- | --- | --- | --- | --- | --- | --- | --- |
| 1 | 1 | **Phát triển dự án SanGameABC** | 149d? | 2015-10-07 | 2016-05-02 |  | 0d |  | 1568h |
| 2 | 1.1 | **Sàn Game System** | 149d? | 2015-10-07 | 2016-05-02 |  |  |  | 1568h |
| 3 | 1.1.1 | Xây dựng Prototype | 5d | 2015-10-07 | 2015-10-13 |  | 0d | cuongnt; thiết kế; dung | 120h |
| 4 | 1.1.2 | Xây dựng DB | 5d | 2015-10-14 | 2015-10-20 | 3 | 0d | cuongnt | 40h |
| 5 | 1.1.3 | **Backend** | 67d? | 2015-10-21 | 2016-01-21 | 4 | 0d |  | 736h |
| 6 | 1.1.3.1 | Đăng nhập | 1d | 2015-10-21 | 2015-10-21 | 4 | 0d | cuongnt | 8h |
| 7 | 1.1.3.2 | **Phân quyền** | 2d? | 2015-10-22 | 2015-10-23 | 6 | 0d | cuongnt | 32h |
| 8 | 1.1.3.2.1 | Tạo mới, sửa, xóa, tìm kiếm User | 1d | 2015-10-22 | 2015-10-22 | 6 | 0d | cuongnt | 8h |
| 9 | 1.1.3.2.2 | Thêm sửa xóa quyền | 1d? | 2015-10-23 | 2015-10-23 | 8 | 0d | cuongnt | 8h |
| 10 | 1.1.3.3 | quản trị thể loại game(thêm, sửa, xóa) | 1d? | 2015-10-26 | 2015-10-26 | 9 | 0d | cuongnt | 8h |
| 11 | 1.1.3.4 | Quản trị game(thêm sửa xóa tìm kiếm, unpack game) | 3d | 2015-10-27 | 2015-10-29 | 10 | 0d | cuongnt | 24h |
| 12 | 1.1.3.5 | **Quản lý Content Provider** | 27d | 2015-10-30 | 2015-12-07 | 11 | 0d |  | 264h |
| 13 | 1.1.3.5.1 | quản lý profile | 1d | 2015-10-30 | 2015-10-30 | 11 | 0d | cuongnt | 8h |
| 14 | 1.1.3.5.2 | Quản lý nội dung chất lương game | 3d | 2015-11-02 | 2015-11-04 | 13 | 0d | cuongnt | 24h |
| 15 | 1.1.3.5.3 | Genarate file APK, IPA cho từng CP | 5d | 2015-11-05 | 2015-11-11 | 14 | 0d | cuongnt | 40h |
| 16 | 1.1.3.5.4 | Tích hợp thanh toán | 5d | 2015-11-12 | 2015-11-18 | 15 | 0d | cuongnt | 40h |
| 17 | 1.1.3.5.5 | **Tin tức, thông báo** | 2d | 2015-11-19 | 2015-11-20 | 16 | 0d | cuongnt | 32h |
| 18 | 1.1.3.5.5.1 | thêm sửa xóa tìm kiếm tin tức | 1d | 2015-11-19 | 2015-11-19 | 16 | 0d | cuongnt | 8h |
| 19 | 1.1.3.5.5.2 | thêm sửa xóa tìm kiếm thông báo | 1d | 2015-11-20 | 2015-11-20 | 18 | 0d | cuongnt | 8h |
| 20 | 1.1.3.5.6 | Quản lý phân hạng khách hàng | 3d | 2015-11-23 | 2015-11-25 | 19 | 0d | cuongnt | 24h |
| 21 | 1.1.3.5.7 | **Thống kê** | 4d | 2015-11-26 | 2015-12-01 | 20 | 0d | cuongnt | 64h |
| 22 | 1.1.3.5.7.1 | Báo cáo thống kê chi tiết | 2d | 2015-11-26 | 2015-11-27 | 20 | 0d | cuongnt | 16h |
| 23 | 1.1.3.5.7.2 | Báo cáo tổng hợp doanh thu | 2d | 2015-11-30 | 2015-12-01 | 22 | 0d | cuongnt | 16h |
| 24 | 1.1.3.5.8 | Đối soát | 2d | 2015-12-02 | 2015-12-03 | 23 | 0d | cuongnt (fai có form mẫu) | 16h |
| 25 | 1.1.3.5.9 | Thanh toán | 2d | 2015-12-04 | 2015-12-07 | 24 | 0d | cuongnt | 16h |

Notes:
- 3: - Xây dựng được 1 bản prototype các tính năng trong hệ thống
- 4: - Đưa ra chi tiết DB ,các bảng dữ liệu ,các trường / - Xây dựng được 1 DB tập trung
- 11: sua ly upload game vao FTP server
- 14: danh gia độ hot của game, doanh thu cua game
- 15: sử lý dịch ngược game để gắn id vŕo game sao đó dóng gói game
- 24: thống nhât biểu mẫu đối soát
- 25: cần thống nhất cơ chế thanh toán kết nối

| ID | WBS | Task | Duration | Start | Finish | Predecessors | Total slack | Resources | Work |
| --- | --- | --- | --- | --- | --- | --- | --- | --- | --- |
| 26 | 1.1.3.6 | **Quản lý Publisher** | 3d? | 2015-12-08 | 2015-12-10 | 12 | 0d | cuongnt | 72h |
| 27 | 1.1.3.6.1 | profile(thêm sửa xóa) | 1d | 2015-12-08 | 2015-12-08 | 25 | 0d | cuongnt | 8h |
| 28 | 1.1.3.6.2 | Thống kê doanh thu theo publisher | 2d | 2015-12-09 | 2015-12-10 | 27 | 0d | cuongnt | 16h |
| 29 | 1.1.3.6.3 | Công cụ hỗ trợ KH thường, VIP | 2d | 2015-12-08 | 2015-12-09 |  | 103d | khi có yêu cầu cụ thể của VIP | 16h |
| 30 | 1.1.3.6.4 | Quản lý việc chống cheat, gian lận | 1d? | 2015-12-08 | 2015-12-08 |  | 104d | do android | 8h |
| 31 | 1.1.3.7 | **Quản lý nội dung** | 5d | 2015-12-11 | 2015-12-17 | 28 | 0d |  | 40h |
| 32 | 1.1.3.7.1 | Công cụ đánh giá chất lượng game | 2d | 2015-12-11 | 2015-12-14 | 28 | 0d | cuongnt | 16h |
| 33 | 1.1.3.7.2 | công cụ đánh giá khả năng phát sinh doanh thu | 3d | 2015-12-15 | 2015-12-17 | 32 | 0d | cuongnt | 24h |
| 34 | 1.1.3.8 | **Quản lý Doanh thu** | 12d | 2015-12-18 | 2016-01-04 | 31 | 0d | cuongnt | 192h |
| 35 | 1.1.3.8.1 | Báo cáo chi tiết | 2d | 2015-12-18 | 2015-12-21 | 33 | 0d | cuongnt | 16h |
| 36 | 1.1.3.8.2 | Báo cáo tổng hợp | 2d | 2015-12-22 | 2015-12-23 | 35 | 0d | cuongnt | 16h |
| 37 | 1.1.3.8.3 | báo cáo doanh thu tổng hợp chi tiết khách hàng vip/thường | 4d | 2015-12-24 | 2015-12-29 | 36 | 0d | cuongnt | 32h |
| 38 | 1.1.3.8.4 | Báo cáo tổng doanh thu theo sms/ card | 2d | 2015-12-30 | 2015-12-31 | 37 | 0d | cuongnt | 16h |
| 39 | 1.1.3.8.5 | Xếp Top doanh thu cho từng game theo thời gian | 2d | 2016-01-01 | 2016-01-04 | 38 | 0d | cuongnt | 16h |
| 40 | 1.1.3.9 | **Quản lý thống kê** | 1d? | 2016-01-05 | 2016-01-05 | 34 | 84d |  | 8h |
| 41 | 1.1.3.9.1 | Thống kê tỷ lệ Install/user trong các campaign | 1d? | 2016-01-05 | 2016-01-05 |  | 84d | cần phối hợp với android | 8h |
| 42 | 1.1.3.10 | **Quản lý thanh toán** | 4d | 2016-01-05 | 2016-01-08 | 39 | 0d |  | 16h |
| 43 | 1.1.3.10.1 | Quy định thanh toán(thêm sửa xóa) | 2d | 2016-01-05 | 2016-01-06 | 39 | 0d | cuongnt | 16h |
| 44 | 1.1.3.10.2 | Báo cáo thanh toán cho từng Pub, CP(ngày tháng năm) | 2d | 2016-01-07 | 2016-01-08 | 43 | 0d |  |  |
| 45 | 1.1.3.11 | **Quản lý tin tức** | 9d | 2016-01-11 | 2016-01-21 | 44 | 0d |  | 72h |
| 46 | 1.1.3.11.1 | Quản trị nội dung: Tin tức thông báo(thêm, sửa, xóa, tìm kiếm) | 2d | 2016-01-11 | 2016-01-12 | 44 | 0d | cuongnt | 16h |
| 47 | 1.1.3.11.2 | Quản lý nội dung cập nhật sự kiện game hot(thêm, sửa, xóa, tìm kiếm) | 2d | 2016-01-13 | 2016-01-14 | 46 | 0d | cuongnt | 16h |
| 48 | 1.1.3.11.3 | Quản trị nội dung thắc mắc, giải đáp cho KH,... | 5d | 2016-01-15 | 2016-01-21 | 47 | 0d | cuongnt | 40h |
| 49 | 1.1.4 | **Frontend** | 72d? | 2016-01-22 | 2016-05-02 | 48 | 0d |  | 672h |
| 50 | 1.1.4.1 | Phối hợp thống nhất giao diện form fron-end(phối hợp kinh doanh và thiết kế) | 2d | 2016-01-22 | 2016-01-25 | 48 | 0d | cuongnt | 16h |
| 51 | 1.1.4.2 | Thiết kế giao diên(phối hợp với thiết kế). | 2d | 2016-01-26 | 2016-01-27 | 50 | 0d | cuongnt | 16h |
| 52 | 1.1.4.3 | Đăng ký(có thể qua mạng xã hội và xác minh qua sms) | 3d | 2016-01-28 | 2016-02-01 | 51 | 0d | cuongnt | 24h |
| 53 | 1.1.4.4 | Đăng nhập | 1d | 2016-02-02 | 2016-02-02 | 52 | 0d | cuongnt | 8h |
| 54 | 1.1.4.5 | Cập nhật thông tin tài khoản | 1d | 2016-02-03 | 2016-02-03 | 53 | 0d | cuongnt | 8h |
| 55 | 1.1.4.6 | Lấy lại tài khoản(xác nhận sms) | 2d | 2016-02-04 | 2016-02-05 | 54 | 0d | cuongnt | 16h |
| 56 | 1.1.4.7 | Xây dựng hòm thư nhận thông báo | 3d | 2016-02-08 | 2016-02-10 | 55 | 0d | cuongnt | 24h |

Notes:
- 27: quản lý thêm sửa xóa publisher
- 28: Báo cáo thống kê
- 29: cần thống nhất các công cụ hỗ trợ
- 30: Đối với CPI trýớc mắt sử dụng công cụ chống cheat của kęnh tracking bęn thứ 3 (2 bęn thống nhất tin týởng 1 kęnh thì cứ theo đó mŕ thanh toán)
- 35: Doanh thu chi tiết / Tên game / Nhà phát hành / Tên Cp / Tên User / Mă thẻ / Seri / Nhà Mạng / Mệnh giá / Doanh thu / Thời gian nạp
- 41: Quản lý thống kê / Thống kê tỷ lệ Install/user trong các campaign / Tên game / Số lượng install / Danh sách CP từ nhiều nhất đến ít nhất / ARPU / ARPPU / Tổng số user đăng kư / Tổng số user đang online / Time on site,...
- 46: thêm sửa xóa thông báo.
- 48: Xây dựng hòm thư nhận và sử lư thông báo của khách hàng

| ID | WBS | Task | Duration | Start | Finish | Predecessors | Total slack | Resources | Work |
| --- | --- | --- | --- | --- | --- | --- | --- | --- | --- |
| 57 | 1.1.4.8 | **Trang chủ** | 12d | 2016-02-11 | 2016-02-26 | 56 | 0d |  | 96h |
| 58 | 1.1.4.8.1 | Tìm kiếm game | 1d | 2016-02-11 | 2016-02-11 | 56 | 0d | cuongnt | 8h |
| 59 | 1.1.4.8.2 | Thông báo từ quản trị | 2d | 2016-02-12 | 2016-02-15 | 58 | 0d | cuongnt | 16h |
| 60 | 1.1.4.8.3 | Tính năngThống kê | 3d | 2016-02-16 | 2016-02-18 | 59 | 0d | cuongnt | 24h |
| 61 | 1.1.4.8.4 | box tin tức thông báo | 2d | 2016-02-19 | 2016-02-22 | 60 | 0d | cuongnt | 16h |
| 62 | 1.1.4.8.5 | xây dựng box game hot | 2d | 2016-02-23 | 2016-02-24 | 61 | 0d | cuongnt | 16h |
| 63 | 1.1.4.8.6 | box game nổi bật | 2d | 2016-02-25 | 2016-02-26 | 62 | 0d | cuongnt | 16h |
| 64 | 1.1.4.9 | **Thống kê** | 12d? | 2016-02-29 | 2016-03-15 | 57 | 0d |  | 96h |
| 65 | 1.1.4.9.1 | **Chi tiêt DT** | 4d | 2016-02-29 | 2016-03-03 | 57 | 0d |  | 32h |
| 66 | 1.1.4.9.1.1 | Thống kê chi tiết doanh thu tổng | 2d | 2016-02-29 | 2016-03-01 | 62 | 0d | cuongnt | 16h |
| 67 | 1.1.4.9.1.2 | thông kê chi tiết nguồn doanh thu | 2d | 2016-03-02 | 2016-03-03 | 66 | 0d | cuongnt | 16h |
| 68 | 1.1.4.9.2 | Biểu đồ | 2d | 2016-03-04 | 2016-03-07 | 65 | 0d | cuongnt | 16h |
| 69 | 1.1.4.9.3 | Bộ lọc cho Tính năng tìm kiếm game | 1d | 2016-03-08 | 2016-03-08 | 68 | 0d | cuongnt | 8h |
| 70 | 1.1.4.9.4 | Bộ lọc Tính năng sự kiện game hot | 1d | 2016-03-09 | 2016-03-09 | 69 | 0d | cuongnt | 8h |
| 71 | 1.1.4.9.5 | **Các thống kê về User** | 4d? | 2016-03-10 | 2016-03-15 | 70 | 0d |  | 32h |
| 72 | 1.1.4.9.5.1 | Số lượng Install mỗi game | 1d? | 2016-03-10 | 2016-03-10 | 70 | 0d | ko lam đc | 8h |
| 73 | 1.1.4.9.5.2 | Số click (tính = số lượt click vào link tải) | 1d | 2016-03-11 | 2016-03-11 | 72 | 0d | cuongnt | 8h |
| 74 | 1.1.4.9.5.3 | CVR ( tỷ lệ từ Click -> Install) | 1d | 2016-03-14 | 2016-03-14 | 73 | 0d | ko lam đc | 8h |
| 75 | 1.1.4.9.5.4 | Thống kê về CPI (nếu kết hợp làm Adnetwork) | 1d? | 2016-03-15 | 2016-03-15 | 74 | 0d | ko lam đc | 8h |
| 76 | 1.1.4.10 | **Kho game** | 7d | 2016-03-16 | 2016-03-24 | 64 | 0d |  | 56h |
| 77 | 1.1.4.10.1 | **Danh sách game** | 7d | 2016-03-16 | 2016-03-24 | 64 | 0d |  | 56h |
| 78 | 1.1.4.10.1.1 | Thống kê số lượng đầu game kd | 1d | 2016-03-16 | 2016-03-16 | 75 | 0d | cuongnt | 8h |
| 79 | 1.1.4.10.1.2 | Xắp xếp từng game theo module hình chữ nhật | 0.5d | 2016-03-17 | 2016-03-17 | 78 | 0d | cuongnt | 4h |
| 80 | 1.1.4.10.1.3 | Trên mỗi game bán cần có: logo, NPH, hỗ trợ thiết bị gì (android, ios,..), tỷ lệ chia sẻ, bài Pr tổng quát,... | 0.5d | 2016-03-17 | 2016-03-17 | 79 | 0d | cuongnt | 4h |

Notes:
- 60: Tính năngThống kę / a. Thống kę chi tięt DT đó / b. Tính năng lọc: Ngŕy/ tuần/tháng/loại DT đó / c. Biểu đồ / d. Thống kę nhanh / Hôm nay / Từ đầu tháng đến giờ

| ID | WBS | Task | Duration | Start | Finish | Predecessors | Total slack | Resources | Work | Text2 |
| --- | --- | --- | --- | --- | --- | --- | --- | --- | --- | --- |
| 81 | 1.1.4.10.1.4 | **Nút bán ngay(chi tiết game)** | 4d | 2016-03-18 | 2016-03-23 | 80 | 0d |  | 32h |  |
| 82 | 1.1.4.10.1.4.1 | Giới thiệu game | 1d | 2016-03-18 | 2016-03-18 | 80 | 0d | cuongnt | 8h |  |
| 83 | 1.1.4.10.1.4.2 | Link hỗ trợ cho từng loại traffic | 1d | 2016-03-21 | 2016-03-21 | 82 | 0d | cuongnt | 8h |  |
| 84 | 1.1.4.10.1.4.3 | Sự kiện hot của game đó | 2d | 2016-03-22 | 2016-03-23 | 83 | 0d | cuongnt | 16h |  |
| 85 | 1.1.4.10.1.5 | Tính năng lọc, tìm kiếm game | 1d | 2016-03-24 | 2016-03-24 | 81 | 0d | cuongnt | 8h |  |
| 86 | 1.1.4.11 | **Công cụ** | 10d? | 2016-03-25 | 2016-04-07 | 76 | 0d |  | 80h |  |
| 87 | 1.1.4.11.1 | Box sự kiện | 1d | 2016-03-25 | 2016-03-25 | 85 | 0d | cuongnt | 8h |  |
| 88 | 1.1.4.11.2 | Mobile web riêng cho từng Cp(Store ) | 7d | 2016-03-28 | 2016-04-05 | 87 | 0d | cuongnt | 56h |  |
| 89 | 1.1.4.11.3 | Tính năng phân tích, định hướng người dùng theo thiết bị, nội dung quan tâm,... | 1d? | 2016-04-06 | 2016-04-06 | 88 | 0d | ko lam đc | 8h |  |
| 90 | 1.1.4.11.4 | Công cụ tối ưu hóa traffic, doanh thu cho Pub | 1d? | 2016-04-07 | 2016-04-07 | 89 | 0d | ko lam đc | 8h |  |
| 91 | 1.1.4.12 | **Hỗ trợ** | 5d | 2016-04-08 | 2016-04-14 | 86 | 0d |  | 40h |  |
| 92 | 1.1.4.12.1 | Sms, Card | 1d | 2016-04-08 | 2016-04-08 | 90 | 0d | cuongnt | 8h |  |
| 93 | 1.1.4.12.2 | Dịch vụ, thắc mắc,.. | 1d | 2016-04-11 | 2016-04-11 | 92 | 0d | cuongnt | 8h |  |
| 94 | 1.1.4.12.3 | Thanh toán | 1d | 2016-04-12 | 2016-04-12 | 93 | 0d | cuongnt | 8h |  |
| 95 | 1.1.4.12.4 | Hotline hỗ trợ | 1d | 2016-04-13 | 2016-04-13 | 94 | 0d | cuongnt | 8h |  |
| 96 | 1.1.4.12.5 | Mạng xã hội hỗ trợ | 0.5d | 2016-04-14 | 2016-04-14 | 95 | 0d | cuongnt | 4h |  |
| 97 | 1.1.4.12.6 | Email hỗ trợ | 0.5d | 2016-04-14 | 2016-04-14 | 96 | 0d | cuongnt | 4h |  |
| 98 | 1.1.4.13 | **Hình thức thanh toán** | 8d? | 2016-04-15 | 2016-04-26 | 91 | 0d | cuongnt | 128h |  |
| 99 | 1.1.4.13.1 | thanh toán bằng thẻ cào | 2d | 2016-04-15 | 2016-04-18 | 96 | 0d | cuongnt | 16h | cuongnt |
| 100 | 1.1.4.13.2 | thanh toán tài khoản ngân hàng | 3d | 2016-04-19 | 2016-04-21 | 99 | 0d | cuongnt | 24h |  |
| 101 | 1.1.4.13.3 | Thanh toán bằng chứng minh thư, số điện thoại, email | 1d? | 2016-04-22 | 2016-04-22 | 100 | 0d | cuongnt | 8h |  |
| 102 | 1.1.4.13.4 | Biểu đồ thanh toán | 2d | 2016-04-25 | 2016-04-26 | 101 | 0d | cuongnt | 16h |  |
| 103 | 1.1.4.14 | **Tin tức** | 4d | 2016-04-27 | 2016-05-02 | 98 | 0d | cuongnt | 64h |  |
| 104 | 1.1.4.14.1 | Tin tức, thông báo của SG | 2d | 2016-04-27 | 2016-04-28 | 102 | 0d | cuongnt | 16h |  |
| 105 | 1.1.4.14.2 | Sự kiện game hot | 2d | 2016-04-29 | 2016-05-02 | 104 | 0d | cuongnt | 16h |  |
| 108 | 1.1.4.15 | Test kiểm thử hệ thống | 1d? | 2016-01-22 | 2016-01-22 |  | 71d |  |  |  |

Notes:
- 88: tự đông sinh ra web rięng khi các cp đăng ký
